# 2011 Trading System Project

How a schedule from MS Project changed from version to version. A marks actual dates.

## Version 1 (saved 2011-08-15)

Note of the change: Moved remotely

| ID | WBS | Task | Duration | Start | Finish | Predecessors | Complete | Total float | Constraint |
| --- | --- | --- | --- | --- | --- | --- | --- | --- | --- |
| 1 | 1 | **Product Development** | 60d? | 2011-03-01 A | 2011-05-23 |  | 55% | 30d |  |
| 2 | 1.1 | **Code study** | 27d | 2011-03-06 A | 2011-04-12 A |  | 100% |  |  |
| 3 |  | Chart study | 7d | 2011-03-06 A | 2011-03-15 A |  | 100% |  |  |
| 4 |  | Ta-lib study | 7d | 2011-04-04 A | 2011-04-12 A |  | 100% |  |  |
| 5 |  | Database design | 25d? | 2011-03-01 A | 2011-04-04 A |  | 100% |  | finish no earlier than 2011-04-04 |
| 6 |  | Framework prototype | 21d | 2011-03-28 A | 2011-04-25 |  | 70% | 29d | start no earlier than 2011-03-28 |
| 7 | 1.4 | **Development** | 1d? | 2011-04-26 | 2011-04-26 | 6 |  | 49d |  |
| 8 | 1.4.1 | **Interface development** | 1d? | 2011-04-26 | 2011-04-26 |  |  | 49d |  |
| 9 |  | New chart | 1d? | 2011-04-26 | 2011-04-26 |  |  | 49d |  |
| 10 |  | Indicator development | 1d? | 2011-04-26 | 2011-04-26 |  |  | 49d |  |
| 11 |  | Stock ranking | 1d? | 2011-04-26 | 2011-04-26 |  |  | 49d |  |
| 12 |  | Strategy Ranking | 1d? | 2011-04-26 | 2011-04-26 |  |  | 49d |  |
| 13 |  | Data input | 1d? | 2011-04-26 | 2011-04-26 |  |  | 49d |  |
| 14 |  | Strategy Development | 60d | 2011-03-01 A | 2011-05-23 |  | 25% | 30d | start no earlier than 2011-03-01 |
| 16 | 2 | **Marketing** | 66d? | 2011-04-04 | 2011-07-04 |  |  | 0d |  |
| 17 |  | Meet finance analysts | 3d | 2011-06-30 | 2011-07-04 |  |  | 0d | start no earlier than 2011-06-30 |
| 18 |  | Securities report | 1d? | 2011-04-04 | 2011-04-04 |  |  | 65d |  |
| 19 |  | Customer Testing & Buzz | 1d? | 2011-04-04 | 2011-04-04 |  |  | 65d |  |

## Version 2 (saved 2011-08-24)

Note of the change: change time

Last finish 2011-07-04 → 2011-09-05 (+63d).

Removed: 16 Marketing; 17 Meet finance analysts; 18 Securities report; 19 Customer Testing & Buzz

Changed:

| ID | Task | Start | Finish | Duration | Complete | Total float | Other |
| --- | --- | --- | --- | --- | --- | --- | --- |
| 1 | **Product Development** |  | 2011-05-23 → 2011-09-05 (+105d) | 60d? → 135d? | 55% → 51% | 30d → 0d |  |
| 7 | **Development** | 2011-04-26 → 2011-08-24 (+120d) | 2011-04-26 → 2011-09-05 (+132d) | 1d? → 9d? |  | 49d → 0d |  |
| 8 | **Interface development** | 2011-04-26 → 2011-08-24 (+120d) | 2011-04-26 → 2011-08-29 (+125d) | 1d? → 4d? |  | 49d → 5d |  |
| 9 | New chart | 2011-04-26 → 2011-08-24 (+120d) | 2011-04-26 → 2011-08-29 (+125d) | 1d? → 4d? |  | 49d → 5d | constraint none → start no earlier than 2011-08-24 |
| 10 | Indicator development | 2011-04-26 → 2011-08-24 (+120d) | 2011-04-26 → 2011-09-05 (+132d) | 1d? → 9d? |  | 49d → 0d | constraint none → start no earlier than 2011-08-24 |
| 11 | Stock ranking | 2011-04-26 → 2011-08-24 (+120d) | 2011-04-26 → 2011-08-24 (+120d) |  |  | 49d → 8d | constraint none → start no earlier than 2011-08-24 |
| 12 | Strategy Ranking | 2011-04-26 → 2011-08-24 (+120d) | 2011-04-26 → 2011-08-24 (+120d) |  |  | 49d → 8d | constraint none → start no earlier than 2011-08-24 |
| 13 | Data input | 2011-04-26 → 2011-08-24 (+120d) | 2011-04-26 → 2011-08-24 (+120d) |  |  | 49d → 8d | constraint none → start no earlier than 2011-08-24 |

## Version 3 (saved 2011-09-24)

Last finish 2011-09-05 → 2011-12-30 (+116d). Complete tasks 3 → 7.

Added:

| ID | Task | Duration | Start | Finish | Constraint |
| --- | --- | --- | --- | --- | --- |
| 14 | Chỉnh sửa giao diện | 7d | 2011-09-26 | 2011-10-04 | start no earlier than 2011-09-26 |
| 16 | **Buzz by Testing** | 1d? | 2011-04-04 | 2011-04-04 |  |
| 17 | Insider testing | 1d? | 2011-04-04 | 2011-04-04 |  |
| 18 | Strategic testing | 1d? | 2011-04-04 | 2011-04-04 |  |
| 19 | **Marketing** | 1d? | 2011-04-04 | 2011-04-04 |  |
| 20 | Ten cong ty | 1d? | 2011-04-04 | 2011-04-04 |  |
| 21 | Logo, slogan, mau sac | 1d? | 2011-04-04 | 2011-04-04 |  |
| 22 | Website | 1d? | 2011-04-04 | 2011-04-04 |  |
| 23 | Catalogue | 1d? | 2011-04-04 | 2011-04-04 |  |
| 24 | Presentation | 1d? | 2011-04-04 | 2011-04-04 |  |

Changed:

| ID | Task | Start | Finish | Duration | Complete | Total float | Other |
| --- | --- | --- | --- | --- | --- | --- | --- |
| 1 | **Product Development** |  | 2011-09-05 → 2011-12-30 (+116d) | 135d? → 219d? | 51% → 35% |  |  |
| 6 | Framework prototype |  | 2011-04-25 A |  | 70% → 100% | 29d → none |  |
| 7 | **Development** | 2011-08-24 A | 2011-09-05 → 2011-10-04 (+29d) | 9d? → 30d? | 0% → 22% | 0d → 63d |  |
| 10 | Indicator development | 2011-08-24 A | 2011-09-05 A |  | 0% → 100% | 0d → none |  |
| 11 | Stock ranking | 2011-08-24 A | 2011-08-24 A |  | 0% → 100% | 8d → none |  |
| 12 | Strategy Ranking | 2011-08-24 A | 2011-08-24 A |  | 0% → 100% | 8d → none |  |
| 13 | Data input |  | 2011-08-24 → 2011-09-30 (+37d) | 1d? → 28d? |  | 8d → 65d |  |
| 15 | Strategy Development | 2011-03-01 A → 2011-06-27 A (+118d) | 2011-05-23 → 2011-12-30 (+221d) | 60d → 135d | 25% → 11% | 75d → 0d | constraint start no earlier than 2011-03-01 → finish no earlier than 2011-12-30 |

## Version 4 (saved 2012-01-04)

Last finish stays 2011-12-30.

Added:

| ID | Task | Duration | Start | Finish | Constraint | Resources |
| --- | --- | --- | --- | --- | --- | --- |
| 15 | webservices | 24d? | 2011-11-01 | 2011-12-02 | start no earlier than 2011-11-01 | Vu Quoc Dung |
| 26 | User guide | 1d? | 2011-04-04 | 2011-04-04 |  |  |
| 27 | Thành lập công ty | 1d? | 2011-04-04 | 2011-04-04 |  |  |
| 28 | Luật pháp công ty | 1d? | 2011-04-04 | 2011-04-04 |  |  |
| 29 | **Finance** | 1d? | 2011-04-04 | 2011-04-04 |  |  |
| 30 | Xác định nguồn vốn và cơ cấu | 1d? | 2011-04-04 | 2011-04-04 |  |  |
| 31 | Xác định cashflow của dự án | 1d? | 2011-04-04 | 2011-04-04 |  |  |
| 32 | Nhà tài trợ của dự án | 1d? | 2011-04-04 | 2011-04-04 |  |  |
| 34 | **Xây dựng mạng lưới khách hàng+ đối tác** | 1d? | 2011-04-04 | 2011-04-04 |  |  |
| 35 | Khach hang Stocks | 1d? | 2011-04-04 | 2011-04-04 |  |  |
| 36 | Khach hang Vang | 1d? | 2011-04-04 | 2011-04-04 |  |  |
| 37 | Khach hang Forex | 1d? | 2011-04-04 | 2011-04-04 |  |  |
| 38 | **Đối tác đào tạo** | 1d? | 2011-04-04 | 2011-04-04 |  |  |
| 39 | Trường+ trung tâm giảng dạy | 1d? | 2011-04-04 | 2011-04-04 |  |  |
| 40 | Đối tác nhà nước | 1d? | 2011-04-04 | 2011-04-04 |  |  |
| 41 | Đối tác quỹ tài chính + ngân hàng | 1d? | 2011-04-04 | 2011-04-04 |  |  |
| 42 | Đối tác công ty | 1d? | 2011-04-04 | 2011-04-04 |  |  |
| 43 | Đối tác Internet + Social Network | 1d? | 2011-04-04 | 2011-04-04 |  |  |

Changed:

| ID | Task | Start | Finish | Duration | Complete | Total float | Other |
| --- | --- | --- | --- | --- | --- | --- | --- |
| 1 | **Product Development** |  |  |  | 35% → 32% |  |  |
| 7 | **Development** |  | 2011-10-04 → 2011-12-02 (+59d) | 30d? → 73d? | 22% → 15% | 63d → 20d |  |
| 20 | **Marketing** |  | 2011-04-04 → 2011-12-05 (+245d) | 1d? → 176d? |  | 194d → 19d |  |
| 21 | Ten cong ty | 2011-04-04 → 2011-11-21 (+231d) | 2011-04-04 → 2011-11-28 (+238d) | 1d? → 6d? |  | 194d → 24d | constraint none → start no earlier than 2011-11-21 |
| 22 | Logo, slogan, mau sac | 2011-04-04 → 2011-11-21 (+231d) | 2011-04-04 → 2011-12-05 (+245d) | 1d? → 11d? |  | 194d → 19d | constraint none → start no earlier than 2011-11-21 |
| 23 | Website | 2011-04-04 → 2011-11-21 (+231d) | 2011-04-04 → 2011-12-05 (+245d) | 1d? → 11d? |  | 194d → 19d | constraint none → start no earlier than 2011-11-21 |
