# Quantum 2012 Management v0.2 08242012

How a schedule from MS Project changed from version to version. A marks actual dates.

## Version 1 (data date 2012-06-02, saved 2012-08-24)

| ID | WBS | Task | Duration | Start | Finish | Predecessors | Complete | Total float | Constraint |
| --- | --- | --- | --- | --- | --- | --- | --- | --- | --- |
| 1 | 1 | **Quantum Desktop Version** | 512d? | 2012-03-01 A | 2012-08-24 |  | 36% | 60d |  |
| 2 | 1.1 | **Quantum version 2.0** | 62d? | 2012-03-01 A | 2012-03-22 |  | 61% | 510d |  |
| 3 |  | Market Summary | 28d? | 2012-03-01 A | 2012-03-09 A |  | 100% |  | finish no earlier than 2012-03-09 |
| 4 |  | Gán Strategy cho từng Stocks - liên quan đến Alerts | 4d? | 2012-03-12 | 2012-03-12 | 3 |  | 520d |  |
| 5 |  | Custom Alerts | 20d? | 2012-03-13 | 2012-03-19 | 4 |  | 520d |  |
| 6 |  | Vẽ Chart Technical | 10d? | 2012-03-20 A | 2012-03-22 A | 5 | 100% |  |  |
| 7 | 1.2 | **Reporting & Email Module** | 18.61d? | 2012-06-18 | 2012-06-22 |  |  | 241.4d |  |
| 8 |  | Analysis | 18.61d? | 2012-06-18 | 2012-06-22 |  |  | 205.4d | start no earlier than 2012-06-18 |
| 9 |  | Design | 4d? | 2012-06-18 | 2012-06-18 |  |  | 220d | start no earlier than 2012-06-18 |
| 10 |  | Implementation | 4d? | 2012-06-18 | 2012-06-18 |  |  | 220d | start no earlier than 2012-06-18 |
| 11 |  | Testing | 4d? | 2012-06-18 | 2012-06-18 |  |  | 220d | start no earlier than 2012-06-18 |
| 12 |  | Integration | 4d? | 2012-06-18 | 2012-06-18 |  |  | 220d | start no earlier than 2012-06-18 |
| 13 | 1.3 | **Data Module** | 40d? | 2012-08-10 A | 2012-08-24 |  | 50% | 60d |  |
| 14 |  | Tổng kết về các Website | 0d? | 2012-08-24 A | 2012-08-24 A |  | 100% |  | start no earlier than 2012-08-24 |
| 15 |  | Đọc dữ liệu từ SSI | 40d? | 2012-08-10 A | 2012-08-24 |  | 50% | 24d | finish no earlier than 2012-08-24 |
| 16 | 1.4 | **Bug fix** | 248d? | 2012-06-01 A | 2012-08-24 |  | 19% | 60d |  |
| 17 |  | XP/2003 installation | 28d? | 2012-06-01 A | 2012-06-08 |  | 29% | 244d | start no earlier than 2012-06-01 |
| 18 |  | Data Correction for VNIndex | 13.71d? | 2012-06-12 | 2012-06-15 |  |  | 260d | finish no earlier than 2012-06-15 |
| 19 |  | Indicators và Chart | 0d? | 2012-08-24 | 2012-08-24 |  |  | 24d | start no earlier than 2012-08-24 |
| 20 | 1.5 | **Optimization** | 4d? | 2012-06-06 | 2012-06-06 |  |  | 288d |  |
| 21 |  | Webservices connexion | 4d? | 2012-06-06 | 2012-06-06 |  |  | 288d | start no earlier than 2012-06-06 |
| 22 | 2 | **Documentation** | 1564d? | 2011-03-01 A | 2012-08-27 |  |  | 56d |  |
| 23 |  | Quantum Requirement Desktop | 64d | 2012-08-06 | 2012-08-27 |  |  | 56d | start no earlier than 2012-08-03 |
| 24 |  | Quantum Admin | 1d? | 2011-03-01 | 2011-03-01 |  |  | 1619d |  |
| 25 |  | Quantum Database | 1d? | 2011-03-01 | 2011-03-01 |  |  | 1619d |  |
| 26 |  | Quantum Architecture | 1d? | 2011-03-01 | 2011-03-01 |  |  | 1619d |  |
| 27 |  | Quantum User Guide Tieng Viet | 1d? | 2011-03-01 | 2011-03-01 |  |  | 1619d |  |
| 28 |  | Quantum User Guide English | 0d? | 2012-08-24 A | 2012-08-24 A |  | 100% |  | start no earlier than 2012-08-24 |
| 29 | 3 | **Quantum Web** | 480d? | 2012-04-03 A | 2012-09-14 |  | 8% | 0d |  |
| 30 |  | Web design by inside team | 480d? | 2012-04-03 A | 2012-09-14 |  | 8% | 0d | finish no earlier than 2012-09-14 |
| 31 |  | Web approved by PM | 0d | 2012-09-14 | 2012-09-14 | 30 |  | 0d | start no earlier than 2012-06-06 |
| 32 | 4 | **Quantum Mobile (iOS, Android)** | 4d? | 2012-09-03 | 2012-09-03 |  |  | 36d |  |
| 33 |  | I phone draft design | 4d? | 2012-09-03 | 2012-09-03 |  |  | 36d | start no earlier than 2012-09-03 |
| 34 |  | I phone approved by PM | 4d? | 2012-09-03 | 2012-09-03 |  |  | 36d | start no earlier than 2012-09-03 |

## Version 2 (data date 2012-06-02, saved 2012-08-25)

Last finish stays 2012-09-14. Complete tasks 4 → 5.

Added:

| ID | Task | Duration | Start | Finish |
| --- | --- | --- | --- | --- |
| 10 | Phân tích report thị trường | 1d? | 2011-03-01 | 2011-03-01 |
| 11 | Phân tích report kỹ thuật | 1d? | 2011-03-01 | 2011-03-01 |
| 12 | Tạo các hàm để viết report | 1d? | 2011-03-01 | 2011-03-01 |
| 13 | Mapping hàm report và hàm Webservices | 1d? | 2011-03-01 | 2011-03-01 |
| 15 | Thiết kế lớp xử lý Data | 1d? | 2011-03-01 | 2011-03-01 |
| 22 | Tích hợp vào hệ thống | 1d? | 2011-03-01 | 2011-03-01 |
| 23 | Document tổng hợp | 1d? | 2011-03-01 | 2011-03-01 |
| 31 | Database Optimisation | 1d? | 2011-03-01 | 2011-03-01 |

Changed:

| ID | Task | Start | Finish | Duration | Complete | Total float | Other |
| --- | --- | --- | --- | --- | --- | --- | --- |
| 1 | **Quantum Desktop Version** | 2012-03-01 A → 2011-03-01 A (-366d) |  | 512d? → 1560d? | 36% → 48% |  |  |
| 8 | **Reporting & Email Module** | 2012-06-18 → 2011-03-01 (-475d) | 2012-06-22 → 2012-06-18 (-4d) | 18.61d? → 1364d? |  | 241.4d → 256d |  |
| 9 | **Analysis** | 2012-06-18 → 2011-03-01 (-475d) | 2012-06-22 → 2011-03-01 (-479d) | 18.61d? → 1d? |  | 205.4d → 1619d | constraint start no earlier than 2012-06-18 → none |
| 14 | **Design** | 2012-06-18 → 2011-03-01 (-475d) | 2012-06-18 → 2011-03-01 (-475d) | 4d? → 1d? |  | 220d → 1619d | constraint start no earlier than 2012-06-18 → none |
| 19 | **Data Module** | 2012-08-10 A → 2011-03-01 A (-528d) |  | 40d? → 1560d? | 50% → 48% |  |  |
| 20 | Tổng kết về các Website |  |  |  |  |  | resources none → Huy; Dat Nguyen; Quan Nguyen [10%]; Tuan Nguyen [10%]; Dung Vu [10%] |
| 21 | Đọc dữ liệu từ SSI |  |  |  |  | 24d → 60d | resources none → Dat Nguyen; Huy; Dung Vu [10%] |
| 24 | **Bug fix** |  |  |  | 19% → 52% |  |  |
| 26 | Data Correction for VNIndex | 2012-06-12 A | 2012-06-15 A |  | 0% → 100% | 260d → none |  |
| 27 | Indicators và Chart |  |  |  |  | 24d → 60d | resources none → Tuan Nguyen; Dung Vu |
| 29 | **Non Functional Requirement** | 2012-06-06 → 2011-03-01 (-463d) |  | 4d? → 1332d? |  |  | was named Optimization |
| 30 | Webservices Optimisation |  |  |  |  |  | was named Webservices connexion |
| 33 | **Documentation** |  |  |  | 0% → 33% |  |  |
| 34 | Requirement for Quantum Desktop v1.4 |  |  |  |  |  | was named Quantum Requirement Desktop; resources none → Quan Nguyen; Dung Vu [50%]; Tuan Nguyen [50%] |
| 35 | Requirement for Quantum Admin v0.4 |  |  | 1d? → 0.5d? |  | 1619d → 1619.5d | was named Quantum Admin; resources none → Quan Nguyen; Dung Vu [50%]; Tuan Nguyen [50%] |
| 36 | Quantum Database |  |  |  |  |  | resources none → Quan Nguyen; Dung Vu [50%]; Tuan Nguyen [50%] |
| 37 | Quantum Architecture |  |  |  |  |  | resources none → Quan Nguyen; Dung Vu [50%]; Tuan Nguyen [50%] |
| 38 | Quantum User Guide Tieng Viet | 2011-03-01 → 2012-08-20 A (+538d) | 2011-03-01 → 2012-08-25 (+543d) | 1d? → 40h | 0% → 10% | 1619d → 0d | constraint none → must finish on 2012-08-25; resources none → Quan Nguyen; Dung Vu [50%]; Tuan Nguyen [50%] |
| 39 | Quantum User Guide English 1.4 | 2012-08-24 A → 2012-08-03 A (-21d) | 2012-08-24 A → 2012-08-17 A (-7d) | 0d? → 80h |  |  | was named Quantum User Guide English; constraint start no earlier than 2012-08-24 → finish no earlier than 2012-08-24; resources none → Quan Nguyen; Dung Vu [50%]; Tuan Nguyen [50%] |
| 43 | Web approved by PM |  |  |  |  |  | resources none → Dung Vu; Quan Nguyen; Tuan Nguyen |
| 46 | Quantum Mobile draft design |  |  |  |  |  | was named I phone draft design |

## Version 3 (data date 2012-06-02, saved 2012-08-25)

Last finish stays 2012-09-14.

Added:

| ID | Task | Duration | Start | Finish | Constraint | Resources |
| --- | --- | --- | --- | --- | --- | --- |
| 17 | Parse File ở cấu trúc docx/doc | 80h? | 2012-08-27 | 2012-09-07 | start no earlier than 2012-08-25 | Duy Anh; Thuy |
| 18 | Truyền tham số sang cho Report Data | 80h | 2012-08-27 | 2012-09-07 | start no earlier than 2012-08-25 | Duy Anh; Thuy |
| 19 | Tạo file docx, sử dụng OpenXML | 80h? | 2012-08-27 | 2012-09-07 | start no earlier than 2012-08-25 | Duy Anh; Thuy |
| 20 | Xây dựng Mapping | 80h? | 2012-08-27 | 2012-09-07 | start no earlier than 2012-08-25 | Dung Vu |
| 22 | Integration test | 24h | 2012-08-27 | 2012-08-29 |  |  |

Changed:

| ID | Task | Start | Finish | Duration | Complete | Total float | Other |
| --- | --- | --- | --- | --- | --- | --- | --- |
| 1 | **Quantum Desktop Version** | 2011-03-01 A → 2012-03-01 A (+366d) | 2012-08-24 → 2012-09-07 (+14d) | 1560d? → 556d? | 48% → 24% | 60d → 20d |  |
| 8 | **Reporting & Email Module** | 2011-03-01 → 2012-06-18 (+475d) | 2012-06-18 → 2012-09-07 (+81d) | 1364d? → 244d? |  | 256d → 20d |  |
| 9 | **Analysis** | 2011-03-01 → 2012-08-27 (+545d) | 2011-03-01 → 2012-08-31 (+549d) | 1d? → 20d? |  | 1619d → 40d |  |
| 10 | Phân tích report thị trường | 2011-03-01 → 2012-08-31 (+549d) | 2011-03-01 → 2012-08-31 (+549d) | 1d? → 0d |  | 1619d → 40d | constraint none → finish no earlier than 2012-08-31; resources none → Duy Anh; Thuy |
| 11 | Phân tích report kỹ thuật | 2011-03-01 → 2012-08-27 (+545d) | 2011-03-01 → 2012-08-27 (+545d) |  |  | 1619d → 59d | resources none → Duy Anh; Thuy |
| 12 | Tạo các hàm để viết report | 2011-03-01 → 2012-08-27 (+545d) | 2011-03-01 → 2012-08-27 (+545d) |  |  | 1619d → 59d | resources none → Duy Anh; Thuy |
| 13 | Mapping hàm report và hàm Webservices | 2011-03-01 → 2012-08-27 (+545d) | 2011-03-01 → 2012-08-27 (+545d) |  |  | 1619d → 59d | resources none → Duy Anh; Thuy |
| 14 | **Design** | 2011-03-01 → 2012-08-27 (+545d) | 2011-03-01 → 2012-08-27 (+545d) |  |  | 1619d → 59d |  |
| 15 | Thiết kế lớp xử lý Data | 2011-03-01 → 2012-08-27 (+545d) | 2011-03-01 → 2012-08-27 (+545d) |  |  | 1619d → 59d |  |
| 16 | **Implementation** | 2012-06-18 → 2012-08-27 (+70d) | 2012-06-18 → 2012-09-07 (+81d) | 4d? → 40d? |  | 256d → 20d | constraint start no earlier than 2012-06-18 → none |
| 21 | **Testing** | 2012-06-18 → 2012-08-27 (+70d) | 2012-06-18 → 2012-08-29 (+72d) | 4d? → 12d |  | 256d → 48d | constraint start no earlier than 2012-06-18 → none |
| 23 | Integration với code |  | 2012-06-18 → 2012-06-20 (+2d) | 4d? → 20h |  | 256d → 254d | was named Integration; resources Thuy; Duy Anh; Tuan Nguyen [30%]; Dung Vu [20%]; Quan Nguyen [10%] → Dung Vu |
| 25 | **Data Module** | 2011-03-01 A → 2012-08-10 A (+528d) | 2012-08-24 → 2012-08-27 (+3d) | 1560d? → 45d? |  | 60d → 59d |  |
| 28 | Tích hợp vào hệ thống | 2011-03-01 → 2012-08-27 (+545d) | 2011-03-01 → 2012-08-27 (+545d) |  |  | 1619d → 59d |  |
| 29 | Document tổng hợp | 2011-03-01 → 2012-08-27 (+545d) | 2011-03-01 → 2012-08-27 (+545d) |  |  | 1619d → 59d |  |
| 35 | **Non Functional Requirement** | 2011-03-01 → 2012-06-06 (+463d) | 2012-06-06 → 2012-08-27 (+82d) | 1332d? → 237d? |  | 288d → 59d |  |
| 37 | Database Optimisation | 2011-03-01 → 2012-08-27 (+545d) | 2011-03-01 → 2012-08-27 (+545d) |  |  | 1619d → 59d |  |
| 39 | **Documentation** | 2011-03-01 A → 2012-08-03 A (+521d) |  | 1564d? → 65d? |  | 56d → 59d |  |
| 40 | Requirement for Quantum Desktop v1.4 |  | 2012-08-27 → 2012-08-25 (-2d) |  |  | 56d → 60d |  |
| 41 | Requirement for Quantum Admin v0.4 | 2011-03-01 → 2012-08-27 (+545d) | 2011-03-01 → 2012-08-27 (+545d) |  |  | 1619.5d → 59.5d |  |
| 42 | Quantum Database | 2011-03-01 → 2012-08-27 (+545d) | 2011-03-01 → 2012-08-27 (+545d) |  |  | 1619d → 59d |  |
| 43 | Quantum Architecture | 2011-03-01 → 2012-08-27 (+545d) | 2011-03-01 → 2012-08-27 (+545d) |  |  | 1619d → 59d |  |
| 47 | **Quantum Web** |  |  | 480d? → 484d? |  |  |  |
