# Quantum 2012 Management v0.2 08242012

How a schedule from MS Project changed from version to version. A marks actual dates.

## Version 1 (data date 2012-06-02, saved 2013-01-12, file Quantum 2012 Management v0.6 15122012.mpp)

| ID | WBS | Task | Duration | Start | Finish | Predecessors | Complete | Total float | Constraint |
| --- | --- | --- | --- | --- | --- | --- | --- | --- | --- |
| 1 | 1 | **Quantum Desktop Version** | 1200d? | 2012-03-01 A | 2013-04-22 |  | 32% | 0d |  |
| 3 | 1.1 | **Quantum version 2.0** | 1200d? | 2012-03-01 A | 2013-04-22 |  | 32% | 0d |  |
| 4 |  | Market Summary | 35d? | 2012-03-01 A | 2012-03-09 A |  | 100% |  | finish no earlier than 2012-03-09 |
| 5 |  | Gán Strategy cho từng Stocks - liên quan đến Alerts | 64h | 2013-03-07 | 2013-03-25 | 4, 9, 27 |  | 3d |  |
| 6 |  | Custom Alerts | 96h | 2013-03-26 | 2013-04-22 | 5, 8 |  | 0d |  |
| 7 |  | Vẽ Chart Technical | 10d? | 2012-03-20 A | 2012-03-22 A | 6 | 100% |  |  |
| 8 |  | Stock Ranking - Mở rộng Category | 32h | 2013-03-07 | 2013-03-15 | 9, 27 |  | 27d |  |
| 9 | 1.2 | **Reporting & Email Module** | 757d? | 2012-06-18 A | 2013-03-07 |  | 16% | 3d |  |
| 10 | 1.2.1 | **Analysis** | 393d? | 2012-08-29 A | 2013-01-14 |  | 86% | 3d |  |
| 11 |  | Phân tích report thị trường | 20h | 2012-08-29 A | 2012-08-31 A |  | 100% |  | finish no earlier than 2012-08-31 |
| 12 |  | Phân tích report kỹ thuật | 1d? | 2012-09-03 A | 2012-09-03 A | 11 | 100% |  |  |
| 13 |  | Tạo các hàm để viết report | 1d? | 2013-01-12 A | 2013-01-14 A | 12 | 100% |  |  |
| 14 |  | Mapping hàm report và hàm Webservices | 1d? | 2013-01-14 | 2013-01-14 | 13 |  | 3d |  |
| 15 |  | Reports dành cho từng nhà đầu tư | 1d? | 2013-01-14 | 2013-01-14 | 14 |  | 3d |  |
| 16 | 1.2.2 | **Design** | 10d | 2013-01-14 | 2013-01-17 |  |  | 3d |  |
| 17 |  | Thiết kế lớp xử lý Data | 20h | 2013-01-14 | 2013-01-17 | 15 |  | 3d |  |
| 18 | 1.2.3 | **Implementation** | 519d? | 2012-09-06 A | 2013-03-07 |  | 13% | 3d |  |
| 19 |  | Parse File ở cấu trúc docx/doc | 80h? | 2012-09-06 A | 2013-01-24 | 17 | 50% | 3d | start no earlier than 2012-08-25 |
| 20 |  | Truyền tham số sang cho Report Data | 80h | 2013-01-24 | 2013-02-07 | 19 |  | 3d | start no earlier than 2012-08-25 |
| 21 |  | Tạo file docx, sử dụng OpenXML | 80h? | 2013-02-07 | 2013-02-21 | 20 |  | 3d | start no earlier than 2012-08-25 |
| 22 |  | Xây dựng Mapping | 80h? | 2013-02-21 | 2013-03-07 | 21 |  | 3d | start no earlier than 2012-08-25 |
| 23 | 1.2.4 | **Testing** | 12d | 2012-08-27 | 2012-08-29 |  |  | 176d |  |
| 24 |  | Integration test | 24h | 2012-08-27 | 2012-08-29 |  |  | 176d |  |
| 25 |  | Integration với code | 20h | 2012-06-18 | 2012-06-20 |  |  | 382d | start no earlier than 2012-06-18 |
| 27 | 1.3 | **Data Module** | 45d? | 2012-08-10 A | 2012-08-27 |  | 94% | 195d |  |
| 28 |  | Tổng kết về các Website | 0d? | 2012-08-24 A | 2012-08-24 A |  | 100% |  | start no earlier than 2012-08-24 |
| 29 |  | Đọc dữ liệu từ SSI | 40d? | 2012-08-10 A | 2012-08-24 A |  | 100% |  | finish no earlier than 2012-08-24 |
| 30 |  | Tích hợp vào hệ thống | 1d? | 2012-08-27 A | 2012-08-27 |  | 50% | 195d |  |
| 31 |  | Document tổng hợp | 1d? | 2012-08-27 | 2012-08-27 |  |  | 195d |  |
| 32 |  | Tích hợp Kitco | 1d? | 2012-08-27 | 2012-08-27 |  |  | 195d |  |
| 33 | 1.4 | **Bug fix** | 248d? | 2012-06-01 A | 2012-08-24 |  | 52% | 328d |  |
| 34 |  | XP/2003 installation | 28d? | 2012-06-01 A | 2012-06-08 |  | 29% | 548d | start no earlier than 2012-06-01 |
| 35 |  | Data Correction for VNIndex | 13.71d? | 2012-06-12 A | 2012-06-15 A |  | 100% |  | finish no earlier than 2012-06-15 |
| 36 |  | Indicators và Chart | 0d? | 2012-08-24 | 2012-08-24 |  |  | 328d | start no earlier than 2012-08-24 |
| 38 | 1.5 | **Non Functional Requirement** | 237d? | 2012-06-06 | 2012-08-27 |  |  | 319d |  |
| 39 |  | Webservices Optimisation | 4d? | 2012-06-06 | 2012-06-06 |  |  | 552d | start no earlier than 2012-06-06 |
| 40 |  | Database Optimisation | 1d? | 2012-08-27 | 2012-08-27 |  |  | 59d |  |
| 42 | 2 | **Documentation** | 100d? | 2012-08-03 A | 2012-09-06 |  | 89% | 648d |  |
| 43 |  | Requirement for Quantum Desktop v1.6 | 81d | 2012-08-06 A | 2012-08-25 A |  | 100% |  | start no earlier than 2012-08-03 |
| 44 |  | Requirement for Quantum Admin v0.6 | 0.5d? | 2012-08-27 A | 2012-08-27 A |  | 100% |  |  |
| 45 |  | Quantum Database | 11d? | 2012-08-27 | 2012-09-06 |  |  | 284d |  |
| 46 |  | Quantum Architecture | 1.5d? | 2012-08-27 A | 2012-08-27 |  | 33% | 316d |  |
| 47 |  | Quantum User Guide Tieng Viet | 42h | 2012-08-20 A | 2012-08-25 A |  | 100% |  | must finish on 2012-08-25 |
| 48 |  | Quantum User Guide English 1.5 | 104h | 2012-08-03 A | 2012-08-17 A |  | 100% |  | finish no earlier than 2012-08-24 |
| 49 |  | Comment trong các module | 1d? | 2012-08-27 | 2012-08-27 |  |  | 79d |  |
| 50 | 2.8 | **Video hướng dẫn sử dụng/ hướng dẫn đầu tư** | 1d? | 2012-08-27 | 2012-08-27 |  |  | 319d |  |
| 51 |  | Mức độ 1 | 1d? | 2012-08-27 | 2012-08-27 |  |  | 79d |  |
| 52 |  | Mức độ 2 | 1d? | 2012-08-27 | 2012-08-27 |  |  | 79d |  |
| 53 |  | Mức độ 3 | 1d? | 2012-08-27 | 2012-08-27 |  |  | 79d |  |
| 55 | 2.9 | **Branding activities** | 1d? | 2012-08-27 | 2012-08-27 |  |  | 319d |  |
| 56 |  | Logo | 1d? | 2012-08-27 | 2012-08-27 |  |  | 319d |  |
| 57 |  | Bao bì phần mềm | 1d? | 2012-08-27 | 2012-08-27 |  |  | 319d |  |
| 59 | 3 | **Quantum Web** | 1d? | 2012-08-27 | 2012-08-27 |  |  | 683d |  |
| 60 | 3.1 | **Web design by inside team** | 1d? | 2012-08-27 | 2012-08-27 |  |  | 319d |  |
| 61 |  | Các chức năng trong phiên bản Web | 1d? | 2012-08-27 | 2012-08-27 |  |  | 79d |  |
| 62 |  | Thiết kế màn hình Login/My Profile | 1d? | 2012-08-27 | 2012-08-27 |  |  | 79d |  |
| 63 |  | Thiết kế màn hình chính | 1d? | 2012-08-27 | 2012-08-27 |  |  | 319d |  |
| 64 |  | Thiết kế màn hình tư vấn | 1d? | 2012-08-27 | 2012-08-27 |  |  | 79d |  |
| 65 |  | Thiết kế màn hình theo dõi Chart | 1d? | 2012-08-27 | 2012-08-27 |  |  | 79d |  |
| 66 |  | Web approved by PM | 0d | 2012-08-27 | 2012-08-27 | 63 |  | 319d | start no earlier than 2012-06-06 |
| 68 | 4 | **Quantum Mobile (iOS, Android)** | 4d? | 2012-09-03 A | 2012-09-03 |  | 10% | 296d |  |
| 69 |  | Quantum Mobile draft design | 4d? | 2012-09-03 A | 2012-09-03 |  | 20% | 296d | start no earlier than 2012-09-03 |
| 70 |  | I phone approved by PM | 4d? | 2012-09-03 | 2012-09-03 |  |  | 56d | start no earlier than 2012-09-03 |

## Version 2 (data date 2013-03-24, saved 2013-05-17, file Quantum 2012 Management v0.7 17052013.mpp)

Last finish 2013-04-22 → 2013-06-29 (+68d). Complete tasks 12 → 16.

Added:

| ID | Task | Duration | Start | Finish |
| --- | --- | --- | --- | --- |
| 47 | Video starts | 1d? | 2012-08-27 | 2012-08-27 |
| 54 | lam CDs | 1d? | 2012-08-27 | 2012-08-27 |

Changed:

| ID | Task | Start | Finish | Duration | Complete | Total float | Predecessors | Other |
| --- | --- | --- | --- | --- | --- | --- | --- | --- |
| 1 | **Quantum Desktop Version** |  | 2013-04-22 → 2013-06-29 (+68d) | 1200d? → 1396d? | 32% → 53% |  |  | baseline finish 2012-12-17 → 2013-06-29 |
| 2 | **Quantum version 2.0** |  | 2013-04-22 → 2013-06-29 (+68d) | 1200d? → 1396d? |  |  |  | baseline finish 2012-12-17 → 2013-06-29 |
| 4 | Gán Strategy cho từng Stocks - liên quan đến Alerts | 2013-03-07 → 2013-05-15 (+69d) | 2013-03-25 → 2013-06-01 (+68d) |  |  | 3d → 0d |  | baseline start 2012-11-01 → 2013-05-15; baseline finish 2012-11-19 → 2013-06-01 |
| 5 | Custom Alerts | 2013-03-26 → 2013-06-03 (+69d) | 2013-04-22 → 2013-06-29 (+68d) |  |  |  |  | baseline start 2012-11-20 → 2013-06-03; baseline finish 2012-12-17 → 2013-06-29 |
| 7 | Stock Ranking - Mở rộng Category | 2013-03-07 → 2013-05-15 (+69d) | 2013-03-15 → 2013-05-23 (+69d) |  |  | 27d → 28d |  | baseline start 2012-11-01 → 2013-05-15; baseline finish 2012-11-09 → 2013-05-23 |
| 8 | **Reporting & Email Module** |  | 2013-03-07 → 2013-05-15 (+69d) | 757d? → 956d? | 16% → 57% | 3d → 0d |  | baseline finish 2012-11-01 → 2013-05-15 |
| 9 | **Analysis** |  | 2013-01-14 → 2013-03-25 (+70d) | 393d? → 592d? | 86% → 99% | 3d → 0d |  | baseline finish 2012-09-03 → 2013-03-25 |
| 12 | Tạo các hàm để viết report |  | 2013-01-14 A → 2013-03-23 A (+68d) | 1d? → 200d? |  |  |  | baseline start 2012-09-03 → 2013-01-12; baseline finish 2012-09-03 → 2013-03-23 |
| 13 | Mapping hàm report và hàm Webservices | 2013-01-14 → 2013-03-25 (+70d) | 2013-01-14 → 2013-03-25 (+70d) |  |  | 3d → 0d |  | baseline start 2012-09-03 → 2013-03-25; baseline finish 2012-09-03 → 2013-03-25 |
| 14 | Reports dành cho từng nhà đầu tư | 2013-01-14 → 2013-03-25 (+70d) | 2013-01-14 → 2013-03-25 (+70d) |  |  | 3d → 0d |  | baseline start 2012-09-03 → 2013-03-25; baseline finish 2012-09-03 → 2013-03-25 |
| 15 | **Design** | 2013-01-14 → 2013-03-25 (+70d) | 2013-01-17 → 2013-03-27 (+69d) |  |  | 3d → 0d |  | baseline start 2012-09-04 → 2013-03-25; baseline finish 2012-09-06 → 2013-03-27 |
| 16 | Thiết kế lớp xử lý Data | 2013-01-14 → 2013-03-25 (+70d) | 2013-01-17 → 2013-03-27 (+69d) |  |  | 3d → 0d |  | baseline start 2012-09-04 → 2013-03-25; baseline finish 2012-09-06 → 2013-03-27 |
| 17 | **Implementation** |  | 2013-03-07 → 2013-05-15 (+69d) | 519d? → 718d? |  | 3d → 0d |  | baseline finish 2012-11-01 → 2013-05-15 |
| 18 | Parse File ở cấu trúc docx/doc |  | 2013-01-24 → 2013-04-03 (+69d) |  |  | 3d → 0d |  | baseline finish 2012-09-20 → 2013-04-03 |
| 19 | Truyền tham số sang cho Report Data | 2013-01-24 → 2013-04-04 (+70d) | 2013-02-07 → 2013-04-17 (+69d) |  |  | 3d → 0d |  | baseline start 2012-09-20 → 2013-04-04; baseline finish 2012-10-04 → 2013-04-17 |
| 20 | Tạo file docx, sử dụng OpenXML | 2013-02-07 → 2013-04-18 (+70d) | 2013-02-21 → 2013-05-01 (+69d) |  |  | 3d → 0d |  | baseline start 2012-10-04 → 2013-04-18; baseline finish 2012-10-18 → 2013-05-01 |
| 21 | Xây dựng Mapping | 2013-02-21 → 2013-05-02 (+70d) | 2013-03-07 → 2013-05-15 (+69d) |  |  | 3d → 0d |  | baseline start 2012-10-18 → 2013-05-02; baseline finish 2012-11-01 → 2013-05-15 |
| 26 | Tổng kết về các Website |  |  |  |  |  |  | resources Huy; Dat Nguyen; Quan Nguyen [10%]; Tuan Nguyen [10%]; Dung Vu [10%] → Huy Trinh; Dat Nguyen; Quan Nguyen [10%]; Tuan Nguyen [10%]; Dung Vu [10%] |
| 27 | Đọc dữ liệu từ SSI |  |  |  |  |  |  | resources Dat Nguyen; Huy; Dung Vu [10%] → Dat Nguyen; Huy Trinh; Dung Vu [10%] |
| 31 | **Bug fix** |  | 2012-08-24 → 2012-08-25 (+1d) | 248d? → 250.5d? | 52% → 49% | 328d → 881.5d |  |  |
| 34 | Indicators và Chart | 2012-08-24 → 2012-08-25 (+1d) | 2012-08-24 → 2012-08-25 (+1d) | 0d? → 2.5d? |  | 328d → 881.5d |  |  |
| 38 | **Documentation** |  |  |  | 89% → 96% | 648d → 844d |  |  |
| 41 | Quantum Database | 2012-08-27 A | 2012-09-06 A |  | 0% → 100% | 284d → none |  |  |
| 42 | Quantum Architecture |  | 2012-08-27 A |  | 33% → 100% | 316d → none |  |  |
| 45 | Comment trong các module | 2012-08-27 A | 2012-08-27 A |  | 0% → 100% | 79d → none |  |  |
| 46 | **Video hướng dẫn sử dụng/ hướng dẫn đầu tư** |  |  | 1d? → 4d? |  | 319d → 875d |  |  |
| 48 | Mức độ 1 |  |  |  |  | 79d → 875d | none → 47 |  |
| 49 | Mức độ 2 |  |  |  |  | 79d → 875d | none → 48 |  |
| 50 | Mức độ 3 |  |  |  |  | 79d → 875d | none → 49 |  |
| 51 | **Branding activities** | 2012-08-27 A |  |  | 0% → 33% | 319d → 879d |  |  |
| 52 | Logo | 2012-08-27 A | 2012-08-27 A |  | 0% → 100% | 319d → none |  |  |
| 55 | **Quantum Web** |  | 2012-08-27 → 2012-08-31 (+4d) | 1d? → 20d? |  | 683d → 0d |  | baseline finish 2012-08-27 → 2012-08-31 |
| 56 | **Web design by inside team** | 2012-08-27 A | 2012-08-27 → 2012-08-28 (+1d) | 1d? → 5d? |  | 319d → 867d |  | baseline finish 2012-08-27 → 2012-08-28 |
| 58 | Thiết kế màn hình Login/My Profile |  |  |  |  | 79d → 867d | none → 57 |  |
| 59 | Thiết kế màn hình chính |  |  |  |  | 319d → 867d | none → 58 |  |
| 60 | Thiết kế màn hình tư vấn |  |  |  |  | 79d → 867d | none → 59 |  |
| 61 | Thiết kế màn hình theo dõi Chart | 2012-08-27 → 2012-08-28 (+1d) | 2012-08-27 → 2012-08-28 (+1d) |  |  | 79d → 867d | none → 60 | baseline start 2012-08-27 → 2012-08-28; baseline finish 2012-08-27 → 2012-08-28 |
| 62 | Web approved by PM | 2012-08-27 → 2012-08-28 (+1d) | 2012-08-27 → 2012-08-31 (+4d) | 0d → 8d |  | 319d → 860d | 59 → 61 | baseline start 2012-08-27 → 2012-08-28; baseline finish 2012-08-27 → 2012-08-31 |
